# 3.13 高中生填报志愿助手人力资源确定

Schedule from MS Project, 2019-06-18 to 2019-08-15, scheduled back from the finish, costs in ¥, A marks actual dates.
涓�鍗庝汉姘戝叡鍜屽浗

## Calendars

- “标准”的副本: Mon-Fri 08:00-12:00, 13:00-17:00; Sat-Sun off.

## Resources

| Resource | Rate |
| --- | --- |
| 任涵彬 | 120 |
| 王秋月 | 80 |
| 赵晨鹤 | 80 |
| 软件架构师 | 100 |
| 王秋月 | 90 |
| 赵晨鹤 | 90 |
| 王秋月 | 60 |
| 赵晨鹤 | 60 |
| 刘文静 | 70 |
| 王秋月 | 70 |
| 任涵彬 | 70 |
| 刘文静 | 100 |
| 团队建设费 |  |
| 测试货物 | 10 |
| 间接成本 |  |
| 储备 |  |

## Schedule

| ID | WBS | Task | Type | Duration | Start | Finish | Predecessors | Complete | Remaining | Baseline start | Baseline finish | Baseline duration | Constraint | Resources | Work | Actual work | Cost | Baseline cost | Actual cost |
| --- | --- | --- | --- | --- | --- | --- | --- | --- | --- | --- | --- | --- | --- | --- | --- | --- | --- | --- | --- |
| 1 | 1 | **启动** |  | 5d? | 2019-06-18 A | 2019-06-23 |  | 8% | 4.58d? | 2019-06-18 | 2019-06-23 | 5d? | as late as possible |  | 104h | 4h | 10,560 | 10,560 | 480 |
| 2 | 1.1 | 任命项目经理 | manual | 1d? | 2019-06-18 | 2019-06-18 |  |  |  | 2019-06-18 | 2019-06-18 | 1d? | as late as possible |  |  |  |  |  |  |
| 3 | 1.2 | 组建核心团队 | manual | 1d | 2019-06-19 | 2019-06-19 | 2FS+0.5d |  |  | 2019-06-19 | 2019-06-19 | 1d | as late as possible | 赵晨鹤; 刘文静; 王秋月; 任涵彬 | 40h |  | 3,760 | 3,760 |  |
| 4 | 1.3 | 干系人分析 | manual | 1d | 2019-06-20 A | 2019-06-20 | 3 | 50% | 0.5d | 2019-06-20 | 2019-06-20 | 1d | as late as possible | 任涵彬 | 8h | 4h | 960 | 960 | 480 |
| 5 | 1.4 | 制定章程 | manual | 1d | 2019-06-21 | 2019-06-21 | 4 |  |  | 2019-06-21 | 2019-06-21 | 1d | as late as possible | 任涵彬 | 8h |  | 960 | 960 |  |
| 6 | 1.5 | 确定项目发起人 | manual | 1d | 2019-06-22 | 2019-06-22 | 5 |  |  | 2019-06-22 | 2019-06-22 | 1d | as late as possible | 任涵彬 | 8h |  | 960 | 960 |  |
| 7 | 1.6 | 项目启动大会 | manual | 1d | 2019-06-23 | 2019-06-23 | 6 |  |  | 2019-06-23 | 2019-06-23 | 1d | as late as possible | 任涵彬; 刘文静; 软件架构师; 赵晨鹤; 王秋月 | 40h |  | 3,920 | 3,920 |  |
| 8 | 2 | **规划** |  | 21d | 2019-06-24 | 2019-07-20 |  |  |  | 2019-06-24 | 2019-07-20 | 21d | as late as possible | 储备 [0.1%]; 间接成本 [0.1%] | 260h |  | 35,280 | 27,680 |  |
| 9 | 2.1 | **规划范围** |  | 9d | 2019-06-24 | 2019-07-04 |  |  |  | 2019-06-24 | 2019-07-04 | 9d | as late as possible | 测试货物 [1000%] | 92h |  | 9,780 | 9,680 |  |
| 10 | 2.1.1 | 制定需求说明书 | manual | 3d | 2019-06-24 | 2019-06-26 | 7 |  |  | 2019-06-24 | 2019-06-26 | 3d | as late as possible | 刘文静 | 24h |  | 2,400 | 2,400 |  |
| 11 | 2.1.2 | 界面设计 | manual | 1d | 2019-06-26 | 2019-06-27 | 10 |  |  | 2019-06-26 | 2019-06-26 | 1d | as late as possible | 赵晨鹤 [50%] | 4h |  | 320 | 320 |  |
| 12 | 2.1.3 | 详细设计说明书 | manual | 3d | 2019-06-27 | 2019-06-29 | 10 |  |  | 2019-06-27 | 2019-06-29 | 3d | as late as possible | 赵晨鹤 | 24h |  | 2,160 | 2,160 |  |
| 13 | 2.1.4 | 范围说明书 | manual | 3d | 2019-06-30 | 2019-07-02 | 10 |  |  | 2019-06-30 | 2019-07-02 | 3d | as late as possible | 任涵彬 | 24h |  | 2,880 | 2,880 |  |
| 14 | 2.1.5 | 创建WBS | manual | 1d | 2019-07-03 | 2019-07-03 | 11, 12, 13 |  |  | 2019-07-03 | 2019-07-03 | 1d | as late as possible | 任涵彬 | 8h |  | 960 | 960 |  |
| 15 | 2.1.6 | 形成范围基准 | manual | 1d | 2019-07-04 | 2019-07-04 | 14 |  |  | 2019-07-04 | 2019-07-04 | 1d | as late as possible | 任涵彬 | 8h |  | 960 | 960 |  |
| 16 | 2.2 | **规划时间** |  | 2d | 2019-07-05 | 2019-07-07 |  |  |  | 2019-07-05 | 2019-07-07 | 2d | as late as possible |  | 32h |  | 3,840 | 3,840 |  |
| 17 | 2.2.1 | 排列工作包顺序 | manual | 1d | 2019-07-05 | 2019-07-05 | 15 |  |  | 2019-07-05 | 2019-07-05 | 1d | as late as possible | 任涵彬 | 8h |  | 960 | 960 |  |
| 18 | 2.2.2 | 估算资源 | manual | 1d | 2019-07-06 | 2019-07-06 | 17 |  |  | 2019-07-06 | 2019-07-06 | 1d | as late as possible | 任涵彬 | 8h |  | 960 | 960 |  |
| 19 | 2.2.3 | 估算持续时间 | manual | 1d | 2019-07-07 | 2019-07-07 | 18 |  |  | 2019-07-07 | 2019-07-07 | 1d | as late as possible | 任涵彬 | 8h |  | 960 | 960 |  |
| 20 | 2.2.4 | 制定进度计划 | manual | 1d | 2019-07-07 | 2019-07-07 | 19 |  |  | 2019-07-07 | 2019-07-07 | 1d | as late as possible | 任涵彬 | 8h |  | 960 | 960 |  |
| 21 | 2.3 | **规划成本** |  | 3d | 2019-07-08 | 2019-07-10 |  |  |  | 2019-07-08 | 2019-07-10 | 3d | as late as possible |  | 24h |  | 2,880 | 2,880 |  |
| 22 | 2.3.1 | 项目成本估算 | manual | 2d | 2019-07-08 | 2019-07-09 | 20 |  |  | 2019-07-08 | 2019-07-09 | 2d | as late as possible | 任涵彬 | 16h |  | 1,920 | 1,920 |  |
| 23 | 2.3.2 | 项目预算 | manual | 1d | 2019-07-10 | 2019-07-10 | 22 |  |  | 2019-07-10 | 2019-07-10 | 1d | as late as possible | 任涵彬 | 8h |  | 960 | 960 |  |
| 24 | 2.4 | **规划质量** |  | 1d | 2019-07-11 | 2019-07-11 |  |  |  | 2019-07-11 | 2019-07-11 | 1d | as late as possible |  | 16h |  | 1,360 | 1,360 |  |
| 25 | 2.4.1 | 制定测试计划 | manual | 1d | 2019-07-11 | 2019-07-11 | 15 |  |  | 2019-07-11 | 2019-07-11 | 1d | as late as possible | 王秋月 | 8h |  | 640 | 640 |  |
| 26 | 2.4.2 | 制定测试用例 | manual | 1d | 2019-07-11 | 2019-07-11 | 25 |  |  | 2019-07-11 | 2019-07-11 | 1d | as late as possible | 王秋月 | 8h |  | 720 | 720 |  |

| ID | WBS | Task | Type | Duration | Start | Finish | Predecessors | Baseline start | Baseline finish | Baseline duration | Constraint | Resources | Work | Cost | Baseline cost |
| --- | --- | --- | --- | --- | --- | --- | --- | --- | --- | --- | --- | --- | --- | --- | --- |
| 27 | 2.5 | **规划人力资源** |  | 2d | 2019-07-12 | 2019-07-13 |  | 2019-07-12 | 2019-07-13 | 2d | as late as possible |  | 24h | 2,240 | 2,240 |
| 28 | 2.5.1 | 制定人力资源计划 | manual | 1d | 2019-07-12 | 2019-07-12 | 18 | 2019-07-12 | 2019-07-12 | 1d | as late as possible | 任涵彬 | 8h | 960 | 960 |
| 29 | 2.5.2 | 制定人员配备管理计划 | manual | 2d | 2019-07-12 | 2019-07-13 | 28 | 2019-07-12 | 2019-07-13 | 2d | as late as possible | 王秋月 | 16h | 1,280 | 1,280 |
| 30 | 2.6 | **规划沟通** |  | 1d | 2019-07-14 | 2019-07-14 |  | 2019-07-14 | 2019-07-14 | 1d | as late as possible |  | 8h | 640 | 640 |
| 31 | 2.6.1 | 制定沟通管理计划 | manual | 1d | 2019-07-14 | 2019-07-14 | 29 | 2019-07-14 | 2019-07-14 | 1d | as late as possible | 王秋月 | 8h | 640 | 640 |
| 32 | 2.7 | **规划采购** |  | 1d | 2019-07-15 | 2019-07-15 |  | 2019-07-15 | 2019-07-15 | 1d | as late as possible |  | 16h | 1,760 | 1,760 |
| 33 | 2.7.1 | 自制外购分析 | manual | 1d | 2019-07-15 | 2019-07-15 | 18 | 2019-07-15 | 2019-07-15 | 1d | as late as possible | 刘文静 | 8h | 800 | 800 |
| 34 | 2.7.2 | 制定采购文件 | manual | 1d | 2019-07-15 | 2019-07-15 | 33 | 2019-07-15 | 2019-07-15 | 1d | as late as possible | 任涵彬 | 8h | 960 | 960 |
| 35 | 2.8 | **规划风险** |  | 5d | 2019-07-16 | 2019-07-20 |  | 2019-07-16 | 2019-07-20 | 5d | as late as possible |  | 32h | 3,360 | 3,360 |
| 36 | 2.8.1 | 识别风险 | manual | 2d | 2019-07-16 | 2019-07-17 | 16, 21, 24, 27, 30, 32 | 2019-07-16 | 2019-07-17 | 2d | as late as possible | 王秋月 | 16h | 1,440 | 1,440 |
| 37 | 2.8.2 | 风险分析 | manual | 1d | 2019-07-17 | 2019-07-17 | 36 | 2019-07-17 | 2019-07-17 | 1d | as late as possible | 任涵彬 | 8h | 960 | 960 |
| 38 | 2.8.3 | 制定风险登记册 | manual | 1d | 2019-07-18 | 2019-07-18 | 37 | 2019-07-18 | 2019-07-18 | 1d | as late as possible | 任涵彬 | 8h | 960 | 960 |
| 39 | 2.9 | 规划整合 | manual | 2d | 2019-07-19 | 2019-07-20 | 38 | 2019-07-19 | 2019-07-20 | 2d | as late as possible | 任涵彬 | 16h | 1,920 | 1,920 |
| 40 | 3 | **执行与监控** |  | 17d | 2019-07-21 | 2019-08-10 |  | 2019-07-21 | 2019-08-10 | 17d | as late as possible |  | 792h | 66,160 | 64,800 |
| 41 | 3.1 | 组建项目团队 | manual | 1d | 2019-07-21 | 2019-07-21 | 8 | 2019-07-21 | 2019-07-21 | 1d | as late as possible | 王秋月; 任涵彬; 赵晨鹤; 刘文静 | 48h | 3,600 | 3,600 |
| 42 | 3.2 | **项目执行** |  | 5d | 2019-07-22 | 2019-07-26 |  | 2019-07-22 | 2019-07-31 | 8d | as late as possible |  | 120h | 8,400 | 8,960 |
| 43 | 3.2.1 | **用户模块** |  | 5d | 2019-07-22 | 2019-07-26 |  | 2019-07-22 | 2019-07-26 | 5d | as late as possible |  | 48h | 3,360 | 3,920 |
| 44 | 3.2.1.1 | 注册登录 | manual | 1d | 2019-07-22 | 2019-07-22 | 41 | 2019-07-22 | 2019-07-22 | 1d | as late as possible | 刘文静 | 8h | 560 | 560 |
| 45 | 3.2.1.2 | 首页 | manual | 1d | 2019-07-23 | 2019-07-23 | 44 | 2019-07-23 | 2019-07-23 | 1d | as late as possible | 刘文静 | 8h | 560 | 560 |
| 46 | 3.2.1.3 | 咨询 | manual | 1d | 2019-07-24 | 2019-07-24 | 45 | 2019-07-24 | 2019-07-24 | 1d | as late as possible | 刘文静 | 8h | 560 | 560 |
| 47 | 3.2.1.4 | 我的 | manual | 1d | 2019-07-25 | 2019-07-25 | 46 | 2019-07-25 | 2019-07-25 | 1d | as late as possible | 刘文静 | 8h | 560 | 560 |
| 48 | 3.2.1.5 | 下单、支付 | manual | 1d | 2019-07-26 | 2019-07-26 | 47 | 2019-07-26 | 2019-07-26 | 1d | as late as possible | 任涵彬 | 8h | 560 | 560 |
| 49 | 3.2.1.6 | 个人配置 | manual | 1d | 2019-07-26 | 2019-07-26 | 48 | 2019-07-26 | 2019-07-26 | 1d | as late as possible | 刘文静 | 8h | 560 | 560 |
| 50 | 3.2.2 | **商家模块** |  | 5d | 2019-07-22 | 2019-07-26 |  | 2019-07-27 | 2019-07-29 | 2d | as late as possible |  | 40h | 2,800 | 2,800 |
| 51 | 3.2.2.1 | 注册入住 | manual | 1d | 2019-07-22 | 2019-07-22 | 41 | 2019-07-27 | 2019-07-27 | 1d | as late as possible | 王秋月 | 8h | 560 | 560 |
| 52 | 3.2.2.2 | 商品管理 | manual | 1d | 2019-07-23 | 2019-07-23 | 51 | 2019-07-27 | 2019-07-27 | 1d | as late as possible | 王秋月 | 8h | 560 | 560 |
| 53 | 3.2.2.3 | 订单处理 | manual | 1d | 2019-07-24 | 2019-07-24 | 52 | 2019-07-28 | 2019-07-28 | 1d | as late as possible | 王秋月 | 8h | 560 | 560 |
| 54 | 3.2.2.4 | 统计 | manual | 1d | 2019-07-25 | 2019-07-25 | 53 | 2019-07-28 | 2019-07-28 | 1d | as late as possible | 王秋月 | 8h | 560 | 560 |
| 55 | 3.2.2.5 | 商家配置 | manual | 1d | 2019-07-26 | 2019-07-26 | 54 | 2019-07-29 | 2019-07-29 | 1d | as late as possible | 王秋月 | 8h | 560 | 560 |

| ID | WBS | Task | Type | Duration | Start | Finish | Predecessors | Baseline start | Baseline finish | Baseline duration | Constraint | Resources | Work | Cost | Baseline cost |
| --- | --- | --- | --- | --- | --- | --- | --- | --- | --- | --- | --- | --- | --- | --- | --- |
| 56 | 3.2.3 | **管理员模块** |  | 5d | 2019-07-22 | 2019-07-26 |  | 2019-07-30 | 2019-07-31 | 2d | as late as possible |  | 32h | 2,240 | 2,240 |
| 57 | 3.2.3.1 | 商家评审 | manual | 1d | 2019-07-22 | 2019-07-22 | 41 | 2019-07-30 | 2019-07-30 | 1d | as late as possible | 任涵彬 | 8h | 560 | 560 |
| 58 | 3.2.3.2 | 促销活动 | manual | 1d | 2019-07-23 | 2019-07-23 | 57 | 2019-07-30 | 2019-07-30 | 1d | as late as possible | 任涵彬 | 8h | 560 | 560 |
| 59 | 3.2.3.3 | 统计分析 | manual | 1d | 2019-07-24 | 2019-07-24 | 58 | 2019-07-31 | 2019-07-31 | 1d | as late as possible | 任涵彬 | 8h | 560 | 560 |
| 60 | 3.2.3.4 | 备份 | manual | 1d | 2019-07-25 | 2019-07-25 | 59 | 2019-07-31 | 2019-07-31 | 1d | as late as possible | 任涵彬 | 8h | 560 | 560 |
| 61 | 3.3 | **项目监控** |  | 7d | 2019-07-27 | 2019-08-03 |  | 2019-08-01 | 2019-08-03 | 2d | as late as possible |  | 264h | 22,640 | 20,720 |
| 62 | 3.3.1 | 各项指标监控 | manual | 4d | 2019-07-27 | 2019-07-31 | 41 | 2019-08-01 | 2019-08-03 | 3d | as late as possible | 王秋月; 任涵彬; 赵晨鹤 | 96h | 7,680 | 5,760 |
| 63 | 3.3.2 | 监控评审 | manual | 1d | 2019-08-01 | 2019-08-01 | 62 | 2019-08-01 | 2019-08-01 | 1d | as late as possible | 赵晨鹤; 任涵彬; 软件架构师; 刘文静; 王秋月 | 48h | 4,640 | 4,640 |
| 64 | 3.3.3 | 变更评审 | manual | 1d | 2019-08-02 | 2019-08-02 | 63 | 2019-08-02 | 2019-08-02 | 1d | as late as possible | 赵晨鹤; 任涵彬; 软件架构师; 刘文静; 王秋月 | 40h | 3,920 | 3,920 |
| 65 | 3.3.4 | 例会 | manual | 1d | 2019-08-03 | 2019-08-03 | 41 | 2019-08-03 | 2019-08-03 | 1d | as late as possible | 赵晨鹤; 王秋月; 刘文静; 任涵彬 | 80h | 6,400 | 6,400 |
| 66 | 3.4 | **管理干系人** |  | 2d | 2019-08-03 | 2019-08-04 |  | 2019-08-03 | 2019-08-04 | 2d | as late as possible |  | 32h | 3,840 | 3,840 |
| 67 | 3.4.1 | 发布项目信息 | manual | 2d | 2019-08-02 | 2019-08-03 | 41 | 2019-08-02 | 2019-08-03 | 2d | as late as possible | 任涵彬 | 16h | 1,920 | 1,920 |
| 68 | 3.4.2 | 报告监控指标 | manual | 1d | 2019-08-04 | 2019-08-04 | 41 | 2019-08-04 | 2019-08-04 | 1d | as late as possible | 任涵彬 | 8h | 960 | 960 |
| 69 | 3.4.3 | 干系人沟通 | manual | 1d | 2019-08-04 | 2019-08-04 | 41 | 2019-08-04 | 2019-08-04 | 1d | as late as possible | 任涵彬 | 8h | 960 | 960 |
| 70 | 3.5 | **团队建设** |  | 6d | 2019-08-05 | 2019-08-10 |  | 2019-08-05 | 2019-08-10 | 6d | as late as possible |  | 240h | 19,200 | 19,200 |
| 71 | 3.5.1 | 培训 | manual | 1d | 2019-08-05 | 2019-08-05 | 41 | 2019-08-05 | 2019-08-05 | 1d | as late as possible | 赵晨鹤; 王秋月; 刘文静; 任涵彬 | 80h | 6,400 | 6,400 |
| 72 | 3.5.2 | 娱乐活动 | manual | 1d | 2019-08-06 | 2019-08-06 | 41 | 2019-08-06 | 2019-08-06 | 1d | as late as possible | 赵晨鹤; 王秋月; 刘文静; 任涵彬 | 80h | 6,400 | 6,400 |
| 73 | 3.5.3 | 沟通 | manual | 1d | 2019-08-07 | 2019-08-07 | 41 | 2019-08-07 | 2019-08-07 | 1d | as late as possible | 赵晨鹤; 王秋月; 刘文静; 任涵彬 | 80h | 6,400 | 6,400 |
| 74 | 3.6 | 采购 | manual | 1d | 2019-08-08 | 2019-08-08 | 41 | 2019-08-08 | 2019-08-08 | 1d | as late as possible | 任涵彬 | 8h | 960 | 960 |
| 75 | 3.7 | 项目验收 | manual | 2d | 2019-08-09 | 2019-08-10 | 42 | 2019-08-09 | 2019-08-10 | 2d | as late as possible | 赵晨鹤; 刘文静; 王秋月; 任涵彬 | 80h | 7,520 | 7,520 |
| 76 | 4 | **收尾** |  | 5d | 2019-08-11 | 2019-08-15 |  | 2019-08-11 | 2019-08-15 | 5d | as late as possible |  | 280h | 24,320 | 24,320 |
| 77 | 4.1 | 项目终验 | manual | 2d | 2019-08-11 | 2019-08-12 | 75 | 2019-08-11 | 2019-08-12 | 2d | as late as possible | 赵晨鹤; 任涵彬; 刘文静; 王秋月 | 80h | 7,520 | 7,520 |
| 78 | 4.2 | 结束采购 | manual | 1d | 2019-08-13 | 2019-08-13 | 75 | 2019-08-13 | 2019-08-13 | 1d | as late as possible | 任涵彬 | 8h | 960 | 960 |
| 79 | 4.3 | 项目内部收尾 | manual | 2d | 2019-08-14 | 2019-08-15 | 75 | 2019-08-14 | 2019-08-15 | 2d | as late as possible | 王秋月; 赵晨鹤; 刘文静; 任涵彬; 软件架构师 | 192h | 15,840 | 15,840 |
